# 23-10-2018 - Via Nectare

Schedule from MS Project, 2019-01-09 to 2019-10-07, A marks actual dates.

## Calendars

- Padrão: Mon-Fri 09:00-12:00, 13:00-18:00; Sat-Sun off. Exceptions (off unless hours are given): 2019-03-05 (Carnaval), 2019-04-19 (Sexta-feira Santa), 2019-04-21 (Tiradentes), 2019-05-01 (Dia do Trabalhador), 2019-06-20 (Corpus Christi), 2019-07-09 (Revolução Constitucionalista de 1932), 2019-09-07 (Indpendência do Brasil).
- Transire: Mon-Fri 09:00-12:00, 13:00-18:00; Sat-Sun off. Exceptions (off unless hours are given): 2019-03-04 (Emenda Carnaval), 2019-03-05 (Carnaval), 2019-04-19 (Sexta-feira Santa), 2019-04-21 (Tiradentes), 2019-05-01 (Dia do Trabalhador), 2019-06-20 (Corpus Christi), 2019-07-09 (Revolução Constitucionalista de 1932), 2019-09-07 (Indpendência do Brasil).

## Resources

| Resource |
| --- |
| Infra Seidor |
| Leonardo Lisboa |
| Vinícius Drago |
| Fernando da Gama |
| Alberto Garcia |
| César Agapito |
| Tadeu Rocha |
| Equipe de Soluções |
| Fábio Barbosa |
| Felipe Flórido |
| Wagner Santos |

## Schedule

| ID | WBS | Task | Type | Duration | Start | Finish | Predecessors | Complete | Remaining | Total slack | Free slack | Constraint | Calendar | Resources | Work | Actual work |
| --- | --- | --- | --- | --- | --- | --- | --- | --- | --- | --- | --- | --- | --- | --- | --- | --- |
| 1 | 1 | **Implantação SAP Business One - Transire Eletrônicos** |  | 187.5d | 2019-01-09 A | 2019-10-07 |  | 45% | 102.38d | 0d |  |  | Transire |  | 2738h | 1061.84h |
| 2 | 1.1 | **Fase 1 - Preparação do projeto** |  | 5.5d | 2019-01-09 A | 2019-01-16 |  | 99% | 0d | 182d |  |  | Transire |  | 14h | 14h |
| 3 | 1.1.1 | **Preparação interna** |  | 5.5d | 2019-01-09 A | 2019-01-16 A |  | 100% |  |  |  |  | Transire |  | 14h | 14h |
| 4 | 1.1.1.1 | Conduzir transferência com a equipe de vendas |  | 0.25d | 2019-01-09 A | 2019-01-09 A |  | 100% |  |  |  | start no earlier than 2019-01-09 | Transire | Vinícius Drago; Leonardo Lisboa | 4h | 4h |
| 5 | 1.1.1.2 | Confirmar escopo do projeto com o cliente |  | 0.25d | 2019-01-09 A | 2019-01-09 A | 4 | 100% |  |  |  |  | Transire | Leonardo Lisboa | 2h | 2h |
| 6 | 1.1.1.3 | Agendar reunião de abertura (São Paulo) |  | 0.5d | 2019-01-11 A | 2019-01-11 A | 5 | 100% |  |  |  | start no earlier than 2019-01-11 | Transire | Leonardo Lisboa | 4h | 4h |
| 7 | 1.1.1.4 | Agendar reunião de abertura (Manaus) |  | 0.5d | 2019-01-16 A | 2019-01-16 A | 6 | 100% |  |  |  | start no earlier than 2019-01-16 | Transire | Leonardo Lisboa | 4h | 4h |
| 8 | 1.1.2 | **Revisar fase de projeto** |  | 0d | 2019-01-16 | 2019-01-16 |  |  |  | 182d |  |  | Transire |  |  |  |
| 9 | 1.1.2.1 | Assinar fase de projeto com cliente | milestone | 0d | 2019-01-16 | 2019-01-16 | 7 |  |  | 182d |  |  | Transire | Leonardo Lisboa |  |  |
| 10 | 1.2 | **Fase 2 - Business Blueprint** |  | 55.5d | 2019-01-16 A | 2019-04-05 |  | 92% | 4.43d | 126.5d |  |  | Transire |  | 1152h | 1047.84h |
| 11 | 1.2.1 | **Identificação de processo de blueprint** |  | 51.5d | 2019-01-16 A | 2019-04-01 |  | 92% | 4.13d | 130.5d |  |  | Transire |  | 1132h | 1027.84h |
| 12 | 1.2.1.1 | Desenhar Blueprint de gerenciamento de dados mestre de estoque (Manaus) |  | 0.5d | 2019-01-16 A | 2019-01-16 A | 9 | 100% |  |  |  |  | Transire | Fernando da Gama | 4h | 4h |
| 13 | 1.2.1.2 | Desenhar Blueprint de Processos de Estoque (Manaus) |  | 2d | 2019-01-17 A | 2019-01-18 A | 12 | 100% |  |  |  |  | Transire | Fernando da Gama | 16h | 16h |
| 14 | 1.2.1.3 | Desenhar Blueprint de Processos de PCP (Manaus) |  | 1d | 2019-01-21 A | 2019-01-21 A | 13 | 100% |  |  |  |  | Transire | Fernando da Gama | 8h | 8h |
| 15 | 1.2.1.4 | Desenhar Blueprint de Processos de Produção (Manaus) |  | 1d | 2019-01-22 A | 2019-01-22 A | 14 | 100% |  |  |  |  | Transire | Fernando da Gama | 8h | 8h |
| 16 | 1.2.1.5 | Desenhar Blueprint de Processos de Qualidade (Manaus) |  | 1d | 2019-01-23 A | 2019-01-23 A | 15 | 100% |  |  |  |  | Transire | Fernando da Gama | 8h | 8h |
| 17 | 1.2.1.6 | Realizar entendimento dos processos levantados até o momento e validar com usuários |  | 1d | 2019-01-24 A | 2019-01-24 A | 16 | 100% |  |  |  |  | Transire | Fernando da Gama | 8h | 8h |
| 18 | 1.2.1.7 | Desenhar Blueprint de Processos de Contabilidade (São Paulo) |  | 1d | 2019-01-21 A | 2019-01-21 A | 14SS | 100% |  |  |  |  | Transire | Alberto Garcia | 8h | 8h |
| 19 | 1.2.1.8 | Desenhar Blueprint de Processos da área Fiscal (São Paulo) |  | 1d | 2019-01-22 A | 2019-01-22 A | 18 | 100% |  |  |  |  | Transire | Alberto Garcia | 8h | 8h |
| 20 | 1.2.1.9 | Desenhar Blueprint de Processos de Custos (São Paulo) |  | 0.5d | 2019-01-23 A | 2019-01-23 A | 19 | 100% |  |  |  |  | Transire | Alberto Garcia | 4h | 4h |
| 21 | 1.2.1.10 | Desenhar Blueprint de Processos de Ativo Imobilizado (São Paulo) |  | 0.5d | 2019-01-23 A | 2019-01-23 A | 20 | 100% |  |  |  |  | Transire | Alberto Garcia | 4h | 4h |
| 22 | 1.2.1.11 | Desenhar Blueprint de Processos de Faturamento (São Paulo) |  | 0.5d | 2019-01-24 A | 2019-01-24 A | 21 | 100% |  |  |  |  | Transire | Alberto Garcia | 4h | 4h |
| 23 | 1.2.1.12 | Desenhar Blueprint de Processos de Bancos (São Paulo) |  | 0.5d | 2019-01-24 A | 2019-01-24 A | 22 | 100% |  |  |  |  | Transire | Alberto Garcia | 4h | 4h |
| 24 | 1.2.1.13 | Realizar entendimento dos processos levantados até o momento e validar com usuários |  | 1d | 2019-01-25 A | 2019-01-25 A | 23 | 100% |  |  |  |  | Transire | Alberto Garcia | 8h | 8h |
| 25 | 1.2.1.14 | Ajustar e revisar documento Blueprint (1) - Processos de Fábrica |  | 2d | 2019-01-28 A | 2019-01-29 A | 17FS+1d | 100% |  |  |  | start no earlier than 2018-04-12 | Transire | Fernando da Gama | 16h | 16h |
| 26 | 1.2.1.15 | Realizar especificação funcional para processo de integração com Basys |  | 3d | 2019-01-30 A | 2019-02-01 A | 25 | 100% |  |  |  |  | Transire | Fernando da Gama | 24h | 24h |
| 27 | 1.2.1.16 | Ajustar e revisar documento Blueprint (1) - Processos de CSC |  | 5d | 2019-01-28 A | 2019-02-01 A | 24 | 100% |  |  |  |  | Transire | Alberto Garcia | 40h | 40h |
| 28 | 1.2.1.17 | Alinhar planilhas de Carga do Plano de Contas e Impostos |  | 1d | 2019-01-28 A | 2019-01-28 A | 24 | 100% |  |  |  |  | Transire | César Agapito | 8h | 8h |
| 29 | 1.2.1.18 | Alinhar planilhas de Carga de Dados Mestres (Itens e Parceiros de Negócio) |  | 1d | 2019-02-01 A | 2019-02-01 A | 28FS+3d | 100% |  |  |  |  | Transire | César Agapito | 8h | 8h |
| 30 | 1.2.1.19 | Desenhar Blueprint de Processos de Gestão de Projetos (Manaus) |  | 3d | 2019-02-04 A | 2019-02-06 A | 32SS, 34SS | 100% |  |  |  | start no earlier than 2019-02-04 | Transire | Tadeu Rocha | 24h | 24h |
| 31 | 1.2.1.20 | Desenhar Blueprint de Processos de Importação (Manaus) |  | 2d | 2019-02-07 A | 2019-02-08 A | 30 | 100% |  |  |  | start no earlier than 2019-02-04 | Transire | Tadeu Rocha | 16h | 16h |
| 32 | 1.2.1.21 | Ajustar e revisar documento Blueprint (2) - Processos de Fábrica |  | 4.75d | 2019-02-04 A | 2019-02-08 A | 26 | 100% |  |  |  | start no earlier than 2019-02-04 | Transire | Fernando da Gama | 38h | 38h |
| 33 | 1.2.1.22 | Reunião sobre o novo M.E.S. e processos do BASIS |  | 0.25d | 2019-02-08 A | 2019-02-08 A | 32 | 100% |  |  |  | start no earlier than 2019-02-04 | Transire | Fernando da Gama | 2h | 2h |
| 34 | 1.2.1.23 | Ajustar e revisar documento Blueprint (3) - Processos de Fábrica |  | 5d | 2019-02-11 A | 2019-02-15 A | 33 | 100% |  |  |  | start no earlier than 2019-02-04 | Transire | Fernando da Gama | 40h | 40h |
| 35 | 1.2.1.24 | Desenhar Blueprint de Processos de Compras Nacionais (São Paulo) |  | 1d | 2019-02-11 A | 2019-02-11 A | 31 | 100% |  |  |  | start no earlier than 2019-02-04 | Transire | Tadeu Rocha | 8h | 8h |
| 36 | 1.2.1.25 | Desenhar Blueprint de Processos de Vendas (São Paulo) |  | 2d | 2019-02-12 A | 2019-02-13 A | 35 | 100% |  |  |  |  | Transire | Tadeu Rocha | 16h | 16h |
| 37 | 1.2.1.26 | Desenhar Blueprint de Processos de Assistência Técnica (São Paulo) |  | 2d | 2019-02-14 A | 2019-02-15 A | 36 | 100% |  |  |  |  | Transire | Tadeu Rocha | 16h | 16h |
| 38 | 1.2.1.27 | Realizar entendimento dos processos levantados até o momento e validar com usuários |  | 1d | 2019-02-18 A | 2019-02-18 A | 37 | 100% |  |  |  |  | Transire | Tadeu Rocha | 8h | 8h |
| 39 | 1.2.1.28 | Apresentar documento Blueprint ao cliente (Processos de CSC) (1) |  | 5d | 2019-02-04 A | 2019-02-08 A | 27 | 100% |  |  |  |  | Transire | Alberto Garcia | 40h | 40h |
| 40 | 1.2.1.29 | Atualizar documento Blueprint com alterações (Processos de CSC) (1) |  | 5d | 2019-02-11 A | 2019-02-15 A | 39 | 100% |  |  |  |  | Transire | Alberto Garcia | 40h | 40h |
| 41 | 1.2.1.30 | Ajustar e revisar documento Blueprint (1) - Processos de Compras, Vendas, Assistência Técnica e Projetos |  | 4d | 2019-02-19 A | 2019-02-22 A | 38 | 100% |  |  |  |  | Transire | Tadeu Rocha | 32h | 32h |
| 42 | 1.2.1.31 | Apresentar documento Blueprint ao cliente (Processos de Fábrica) (1) |  | 3d | 2019-02-18 A | 2019-02-20 A | 33FS+5d, 32FS+5d, 34FS+5d | 100% |  |  |  |  | Transire | Fernando da Gama | 24h | 24h |
| 43 | 1.2.1.32 | Apresentar documento Blueprint ao cliente (Processos de CSC) (2) |  | 2d | 2019-02-18 A | 2019-02-19 A | 40 | 100% |  |  |  |  | Transire | Alberto Garcia | 16h | 16h |
| 44 | 1.2.1.33 | Atualizar documento Blueprint com alterações (Processos de CSC) (2) |  | 3d | 2019-02-20 A | 2019-02-22 A | 43 | 100% |  |  |  |  |  | Alberto Garcia | 24h | 24h |
| 45 | 1.2.1.34 | Apresentar documento Blueprint ao cliente (Processos de CSC) (3) |  | 5d | 2019-02-25 A | 2019-03-01 A | 44 | 100% |  |  |  |  | Transire | Alberto Garcia | 40h | 40h |
| 46 | 1.2.1.35 | Atualizar documento Blueprint com alterações (Processos de Fábrica) (1) |  | 2d | 2019-02-21 A | 2019-02-22 A | 42 | 100% |  |  |  |  | Transire | Fernando da Gama | 16h | 16h |
| 47 | 1.2.1.36 | Apresentar documento Blueprint ao cliente (Processos de Compras, Vendas, Assistência Técnica e Projetos) (1) |  | 3d | 2019-02-25 A | 2019-02-27 A | 41 | 100% |  |  |  |  | Transire | Tadeu Rocha | 24h | 24h |
| 48 | 1.2.1.37 | Atualizar documento Blueprint com alterações (Processos de Compras, Vendas, Assistência Técnica e Projetos) (1) |  | 2d | 2019-02-28 A | 2019-03-01 A | 47 | 100% |  |  |  |  | Transire | Tadeu Rocha | 16h | 16h |
| 49 | 1.2.1.38 | Apresentar documento Blueprint ao cliente (Processos de Fábrica) (2) |  | 5d | 2019-02-25 A | 2019-03-01 A | 46 | 100% |  |  |  |  | Transire | Fernando da Gama | 40h | 40h |
| 50 | 1.2.1.39 | Atualizar documento Blueprint com alterações (Processos de Fábrica) (2) |  | 3d | 2019-03-06 A | 2019-03-08 A | 49 | 100% |  |  |  |  | Transire | Fernando da Gama | 24h | 24h |
| 51 | 1.2.1.40 | Apresentar documento Blueprint ao cliente (Processos de Compras, Vendas, Assistência Técnica e Projetos) (2) |  | 3d | 2019-03-06 A | 2019-03-08 A | 48 | 100% |  |  |  |  | Transire | Tadeu Rocha | 24h | 24h |
| 52 | 1.2.1.41 | Desenhar Blueprint de Processos de Compras Nacionais (Manaus) |  | 3d | 2019-03-11 A | 2019-03-13 A | 51 | 100% |  |  |  | start no earlier than 2019-02-04 | Transire | Tadeu Rocha | 24h | 24h |
| 53 | 1.2.1.42 | Desenhar Blueprint de Processos de Integração Cielo - Stelo e Controladoria |  | 3d | 2019-03-06 A | 2019-03-08 A | 48 | 100% |  |  |  |  | Transire | Alberto Garcia | 24h | 24h |
| 54 | 1.2.1.43 | Apresentar documento Blueprint ao cliente (Processos de Integração Cielo-Stelo e Controladoria) |  | 3d | 2019-03-11 A | 2019-03-13 A | 53 | 100% |  |  |  | start no earlier than 2019-02-04 | Transire | Alberto Garcia | 24h | 24h |
| 55 | 1.2.1.44 | Atualizar documento Blueprint com alterações (Processos de Integração Cielo-Stelo e Controladoria) |  | 2d | 2019-03-14 A | 2019-03-15 A | 54 | 100% |  |  |  |  | Transire | Alberto Garcia | 16h | 16h |
| 56 | 1.2.1.45 | Desenhar Blueprint de Processos de Apuração de Impostos |  | 3d | 2019-03-18 A | 2019-03-20 A | 55 | 100% |  |  |  |  | Transire | Alberto Garcia | 24h | 24h |
| 57 | 1.2.1.46 | Apresentar documento Blueprint ao cliente (Apuração de Impostos) |  | 2d | 2019-03-21 A | 2019-03-22 A | 56 | 100% |  |  |  | start no earlier than 2019-02-04 | Transire | Alberto Garcia | 16h | 16h |
| 58 | 1.2.1.47 | Desenhar Blueprint de Processos de M.E.S. (Manaus) |  | 3d | 2019-03-11 A | 2019-03-13 A | 50 | 100% |  |  |  | start no earlier than 2019-02-04 | Transire | Fernando da Gama | 24h | 24h |
| 59 | 1.2.1.48 | Desenhar Blueprint de Processos de RTS, PA Picking e Picking Reverso (Manaus) |  | 2d | 2019-03-14 A | 2019-03-15 A | 52 | 100% |  |  |  | start no earlier than 2019-02-04 | Transire | Tadeu Rocha; Fernando da Gama | 32h | 32h |
| 60 | 1.2.1.49 | Atualizar documento Blueprint com alterações (Processos de Compras, Vendas, Assistência Técnica e Projetos) (2) |  | 5d | 2019-03-18 A | 2019-03-22 A | 59 | 100% |  |  |  |  | Transire | Tadeu Rocha | 40h | 40h |
| 61 | 1.2.1.50 | Atualizar documento Blueprint com alterações (M.E.S. e BASIS) (1) |  | 5d | 2019-03-18 A | 2019-03-22 A | 59 | 100% |  |  |  |  | Transire | Fernando da Gama | 40h | 40h |
| 62 | 1.2.1.51 | Reunião sobre o novo M.E.S. com equipe de Manaus |  | 3d | 2019-03-25 A | 2019-03-27 | 61 | 66% | 1.02d | 0d |  |  | Transire | Fernando da Gama | 24h | 15.84h |
| 63 | 1.2.1.52 | Reunião sobre tecnologias para desenvolvimento de integrações |  | 1d | 2019-03-27 | 2019-03-27 | 62FF |  |  | 0d |  |  | Transire | Wagner Santos | 8h |  |
| 64 | 1.2.1.53 | Atualizar documento Blueprint com alterações (Processos de Desmontagem PA, PSA e Chipset) |  | 2d | 2019-03-28 | 2019-03-29 | 62 |  |  | 126.5d | 0d |  | Transire | Fernando da Gama | 16h |  |
| 65 | 1.2.1.54 | Atualizar documento Blueprint com alterações (Processos de Compras, Vendas, Assistência Técnica e Projetos) (3) |  | 5d | 2019-03-25 A | 2019-03-29 | 60 | 40% | 3d | 126.5d | 0d |  | Transire | Tadeu Rocha | 40h | 16h |
| 66 | 1.2.1.55 | Atualizar documento Blueprint com alterações e quadros de assinatura (Processos de Controladoria) |  | 5d | 2019-03-25 A | 2019-03-29 | 57 | 40% | 3d | 126.5d | 0d |  | Transire | Alberto Garcia | 40h | 16h |
| 67 | 1.2.1.56 | Assinar Blueprint junto com o cliente |  | 1d | 2019-04-01 | 2019-04-01 | 66, 65, 64 |  |  | 126.5d | 0d |  | Transire | Fernando da Gama; Alberto Garcia; Tadeu Rocha | 24h |  |
| 68 | 1.2.1.57 | Atualizar escopo de projeto (se aplicável) | milestone | 0d | 2019-04-01 | 2019-04-01 | 67 |  |  | 130.5d | 0d |  | Transire | Leonardo Lisboa |  |  |
| 69 | 1.2.1.58 | Atualizar plano de projeto (se aplicável) | milestone | 0d | 2019-04-01 | 2019-04-01 | 68 |  |  | 130.5d |  |  | Transire | Leonardo Lisboa |  |  |

| ID | WBS | Task | Type | Duration | Start | Finish | Predecessors | Complete | Remaining | Total slack | Constraint | Calendar | Resources | Work | Actual work |
| --- | --- | --- | --- | --- | --- | --- | --- | --- | --- | --- | --- | --- | --- | --- | --- |
| 70 | 1.2.2 | **Entrega de planilhas preenchidas em sessão de Blueprint** |  | 32d | 2019-02-18 A | 2019-04-05 |  |  | 32d | 126.5d |  | Transire |  |  |  |
| 71 | 1.2.2.1 | Entregar modelo de plano de contas SAP Business One | milestone | 0d | 2019-02-18 A | 2019-02-18 A | 28FS+15d | 100% |  |  |  | Transire |  |  |  |
| 72 | 1.2.2.2 | Entregar planilha de impostos | milestone | 0d | 2019-04-05 | 2019-04-05 | 67FS+4d |  |  | 126.5d |  | Transire |  |  |  |
| 73 | 1.2.2.3 | Entregar planilha de PNs | milestone | 0d | 2019-02-22 A | 2019-02-22 A | 29FS+15d | 100% |  |  |  | Transire |  |  |  |
| 74 | 1.2.2.4 | Entregar planilha de itens | milestone | 0d | 2019-02-22 A | 2019-02-22 A | 29FS+15d | 100% |  |  |  | Transire |  |  |  |
| 75 | 1.2.3 | **Lista de verificação de software** |  | 37.5d | 2019-01-31 A | 2019-03-27 |  | 99% | 0d | 0d |  | Transire |  | 20h | 20h |
| 76 | 1.2.3.1 | Reunião de alinhamento com equipe técnica de infraestrutura |  | 0.5d | 2019-01-31 A | 2019-01-31 A |  | 100% |  |  | start no earlier than 2019-01-31 | Transire | Fábio Barbosa; Leonardo Lisboa; Vinícius Drago; Felipe Flórido; Infra Seidor | 20h | 20h |
| 77 | 1.2.3.2 | **Instalar ambiente Cloud (se necessário)** |  | 0d | 2019-02-04 A | 2019-02-04 A |  | 100% |  |  |  | Transire |  |  |  |
| 78 | 1.2.3.2.1 | Instalar acesso remoto | milestone | 0d | 2019-02-04 A | 2019-02-04 A | 76FS+2d | 100% |  |  | start no earlier than 2018-04-12 | Transire | Infra Seidor |  |  |
| 79 | 1.2.3.2.2 | Instalar acesso via navegador | milestone | 0d | 2019-02-04 A | 2019-02-04 A | 78 | 100% |  |  |  | Transire | Infra Seidor |  |  |
| 80 | 1.2.3.2.3 | Instalar Cloud Control Center | milestone | 0d | 2019-02-04 A | 2019-02-04 A | 79 | 100% |  |  |  | Transire | Infra Seidor |  |  |
| 81 | 1.2.3.3 | **Instalar o SAP Business One** |  | 0d | 2019-03-27 | 2019-03-27 |  |  |  | 0d |  | Transire |  |  |  |
| 82 | 1.2.3.3.1 | Servidor SAP Business One | milestone | 0d | 2019-03-27 | 2019-03-27 | 63 |  |  | 0d |  | Transire | Infra Seidor |  |  |
| 83 | 1.2.3.3.2 | Cliente SAP Business One no servidor | milestone | 0d | 2019-03-27 | 2019-03-27 | 82 |  |  | 0d |  | Transire | Infra Seidor |  |  |
| 84 | 1.2.3.3.3 | Clientes SAP Business One | milestone | 0d | 2019-03-27 | 2019-03-27 | 83 |  |  | 0d |  | Transire | Infra Seidor |  |  |
| 85 | 1.2.3.3.4 | Plataforma de suporte remoto (RSP) | milestone | 0d | 2019-03-27 | 2019-03-27 | 84 |  |  | 0d |  | Transire | Infra Seidor |  |  |
| 86 | 1.2.3.3.5 | System Landscape Directory (SLD) | milestone | 0d | 2019-03-27 | 2019-03-27 | 85 |  |  | 0d |  | Transire | Infra Seidor |  |  |
| 87 | 1.2.3.3.6 | Ferramentas de migração de dados (se aplicáveis) | milestone | 0d | 2019-03-27 | 2019-03-27 | 86 |  |  | 0d |  | Transire | Infra Seidor |  |  |
| 88 | 1.2.3.4 | Instalar patches | milestone | 0d | 2019-03-27 | 2019-03-27 | 87 |  |  | 0d |  | Transire | Infra Seidor |  |  |
| 89 | 1.2.3.5 | Criar procedimentos para atualização de servidor | milestone | 0d | 2019-03-27 | 2019-03-27 | 88 |  |  | 0d |  | Transire | Infra Seidor |  |  |
| 90 | 1.2.3.6 | **Configurar serviços** |  | 0d | 2019-03-27 | 2019-03-27 |  |  |  | 0d |  | Transire |  |  |  |
| 91 | 1.2.3.6.1 | Licenças | milestone | 0d | 2019-03-27 | 2019-03-27 | 89 |  |  | 0d |  | Transire | Infra Seidor |  |  |
| 92 | 1.2.3.6.2 | Backup | milestone | 0d | 2019-03-27 | 2019-03-27 | 91 |  |  | 0d |  | Transire | Infra Seidor |  |  |
| 93 | 1.2.3.6.3 | Mailer | milestone | 0d | 2019-03-27 | 2019-03-27 | 92 |  |  | 0d |  | Transire | Infra Seidor |  |  |
| 94 | 1.2.3.7 | Inicializar banco de dados de análise (para B1A ou B1H, se necessário) | milestone | 0d | 2019-03-27 | 2019-03-27 | 93 |  |  | 0d |  | Transire | Infra Seidor |  |  |
| 95 | 1.2.3.8 | Instalar framework de integração (se necessário) | milestone | 0d | 2019-03-27 | 2019-03-27 | 94 |  |  | 0d |  | Transire | Infra Seidor |  |  |
| 96 | 1.2.3.9 | Instalar servidor de integração com o Outlook (se necessário) | milestone | 0d | 2019-03-27 | 2019-03-27 | 95 |  |  | 0d |  | Transire | Infra Seidor |  |  |
| 97 | 1.2.3.10 | Instalar SAP add-Ons (conforme necessário) | milestone | 0d | 2019-03-27 | 2019-03-27 | 96 |  |  | 0d |  | Transire | Infra Seidor |  |  |

| ID | WBS | Task | Type | Duration | Start | Finish | Predecessors | Baseline start | Baseline finish | Baseline duration | Total slack | Free slack | Calendar | Resources | Work | Text7 |
| --- | --- | --- | --- | --- | --- | --- | --- | --- | --- | --- | --- | --- | --- | --- | --- | --- |
| 98 | 1.2.3.11 | **Instalar add-ons externos (se necessários)** |  | 0d | 2019-03-27 | 2019-03-27 |  |  |  |  | 0d |  | Transire |  |  |  |
| 99 | 1.2.3.11.1 | Registro de licenças para add-ons | milestone | 0d | 2019-03-27 | 2019-03-27 | 97 |  |  |  | 0d |  | Transire | Infra Seidor |  |  |
| 100 | 1.2.3.12 | Criar bancos de dados (produção, teste, desenvolvimento) | milestone | 0d | 2019-03-27 | 2019-03-27 | 99 |  |  |  | 0d |  | Transire | Infra Seidor |  |  |
| 101 | 1.2.3.13 | Testar backup de restauração para novo BD | milestone | 0d | 2019-03-27 | 2019-03-27 | 100 |  |  |  | 0d |  | Transire | Infra Seidor |  |  |
| 102 | 1.2.4 | **Revisar fase de projeto** |  | 0d | 2019-03-27 | 2019-03-27 |  |  |  |  | 133.5d |  | Transire |  |  |  |
| 103 | 1.2.4.1 | Revisar fase de projeto | milestone | 0d | 2019-03-27 | 2019-03-27 | 101 |  |  |  | 133.5d | 0d | Transire | Leonardo Lisboa |  |  |
| 104 | 1.2.4.2 | Assinar fase de projeto com cliente | milestone | 0d | 2019-03-27 | 2019-03-27 | 103 |  |  |  | 133.5d |  | Transire | Leonardo Lisboa |  |  |
| 105 | 1.3 | **Fase 3 - Realização de projeto** |  | 90d | 2019-03-28 | 2019-08-06 |  |  |  |  | 0d |  | Transire |  | 992h |  |
| 106 | 1.3.1 | **Preparar Base de Dados** |  | 31d | 2019-03-28 | 2019-05-13 |  |  |  |  | 0d |  | Transire |  | 264h |  |
| 107 | 1.3.1.1 | Configuração do SAP Business One |  | 15d | 2019-03-28 | 2019-04-17 | 101 |  |  |  | 0d |  | Transire | Equipe de Soluções | 120h |  |
| 108 | 1.3.1.2 | Configuração dos módulos |  | 5d | 2019-04-18 | 2019-04-25 | 107 |  |  |  | 0d |  | Transire | Equipe de Soluções | 40h |  |
| 109 | 1.3.1.3 | Configuração Add-on Integração Bancária |  | 3d | 2019-04-26 | 2019-04-30 | 108 | 2016-02-15 | 2016-02-25 | 8.5d | 0d |  | Transire | Equipe de Soluções | 24h | 00000XXX |
| 110 | 1.3.1.4 | Configuração Add-on Fiscal |  | 7d | 2019-05-02 | 2019-05-10 | 109 | 2016-02-12 | 2016-02-12 | 4h | 0d |  | Transire | Equipe de Soluções | 56h | 00000XXX |
| 111 | 1.3.1.5 | Realizar QA da base de dados |  | 1d | 2019-05-13 | 2019-05-13 | 110 | 2016-02-12 | 2016-02-12 | 4h | 0d |  | Transire | Fernando da Gama; Tadeu Rocha; Alberto Garcia | 24h | 00000XXX |
| 112 | 1.3.2 | **Cargas de dados para teste** |  | 6d | 2019-05-14 | 2019-05-21 |  |  |  |  | 0d |  | Transire |  | 48h |  |
| 113 | 1.3.2.1 | Cadastro de Parceiros de Negócio |  | 3d | 2019-05-14 | 2019-05-16 | 111 |  |  |  | 0d |  | Transire | Equipe de Soluções | 24h |  |
| 114 | 1.3.2.2 | Cadastro de Itens |  | 3d | 2019-05-17 | 2019-05-21 | 113 |  |  |  | 0d |  | Transire | Equipe de Soluções | 24h |  |
| 115 | 1.3.3 | **Workshop para equipe de usuários chave** |  | 9d | 2019-05-22 | 2019-06-03 |  |  |  |  | 0d |  | Transire |  | 176h |  |
| 116 | 1.3.3.1 | Realizar workshop de Processos de Dados Mestres / Navegação Básica (São Paulo) |  | 1d | 2019-05-22 | 2019-05-22 | 114 |  |  |  | 0d |  | Transire | Alberto Garcia | 8h |  |
| 117 | 1.3.3.2 | Realizar workshop de Processos de Dados Mestres / Navegação Básica (Manaus) |  | 1d | 2019-05-22 | 2019-05-22 | 114 |  |  |  | 88.5d | 0d | Transire | Fernando da Gama | 8h |  |
| 118 | 1.3.3.3 | Realizar workshop de Processos de Estoque (Manaus) |  | 2d | 2019-05-23 | 2019-05-24 | 117 |  |  |  | 88.5d | 0d | Transire | Fernando da Gama | 16h |  |
| 119 | 1.3.3.4 | Realizar workshop de Processos de PCP (Manaus) |  | 1d | 2019-05-27 | 2019-05-27 | 118 |  |  |  | 88.5d | 0d | Transire | Fernando da Gama | 8h |  |
| 120 | 1.3.3.5 | Realizar workshop de Processos de Produção (Manaus) |  | 2d | 2019-05-28 | 2019-05-29 | 119 |  |  |  | 88.5d | 0d | Transire | Fernando da Gama | 16h |  |
| 121 | 1.3.3.6 | Realizar workshop de Processos de Qualidade (Manaus) |  | 1d | 2019-05-30 | 2019-05-30 | 120 |  |  |  | 88.5d | 0d | Transire | Fernando da Gama | 8h |  |
| 122 | 1.3.3.7 | Realizar workshop de Processos de Contabilidade (São Paulo) |  | 2d | 2019-05-23 | 2019-05-24 | 116 |  |  |  | 87.5d | 0d | Transire | Alberto Garcia | 16h |  |
| 123 | 1.3.3.8 | Realizar workshop de Processos da área Fiscal (São Paulo) |  | 2d | 2019-05-27 | 2019-05-28 | 122 |  |  |  | 87.5d | 0d | Transire | Alberto Garcia | 16h |  |
| 124 | 1.3.3.9 | Realizar workshop de Processos de Custos (São Paulo) |  | 1d | 2019-05-29 | 2019-05-29 | 123 |  |  |  | 87.5d | 0d | Transire | Alberto Garcia | 8h |  |
| 125 | 1.3.3.10 | Realizar workshop de Processos de Ativo Imobilizado (São Paulo) |  | 1d | 2019-05-30 | 2019-05-30 | 124 |  |  |  | 87.5d | 0d | Transire | Alberto Garcia | 8h |  |
| 126 | 1.3.3.11 | Realizar workshop de Processos de Faturamento (São Paulo) |  | 1d | 2019-05-31 | 2019-05-31 | 125 |  |  |  | 87.5d | 0d | Transire | Alberto Garcia | 8h |  |
| 127 | 1.3.3.12 | Realizar workshop de Processos de Bancos (São Paulo) |  | 1d | 2019-06-03 | 2019-06-03 | 126 |  |  |  | 87.5d |  | Transire | Alberto Garcia | 8h |  |
| 128 | 1.3.3.13 | Realizar workshop de Processos de Compras e Importação (São Paulo) |  | 2d | 2019-05-23 | 2019-05-24 | 116 |  |  |  | 0d |  | Transire | Tadeu Rocha | 16h |  |
| 129 | 1.3.3.14 | Realizar workshop de Processos de Vendas (São Paulo) |  | 1d | 2019-05-27 | 2019-05-27 | 128 |  |  |  | 0d |  | Transire | Tadeu Rocha | 8h |  |
| 130 | 1.3.3.15 | Realizar workshop de Processos de Serviços e Assistência Técnica (São Paulo) |  | 1d | 2019-05-28 | 2019-05-28 | 129 |  |  |  | 0d |  | Transire | Tadeu Rocha | 8h |  |
| 131 | 1.3.3.16 | Realizar workshop de Processos de Administração do Sistema (São Paulo) |  | 1d | 2019-05-29 | 2019-05-29 | 130 |  |  |  | 0d |  | Transire | Tadeu Rocha | 8h |  |
| 132 | 1.3.3.17 | Realizar workshop de Processos de Gestão de Projetos (Manaus) |  | 1d | 2019-05-31 | 2019-05-31 | 121 |  |  |  | 88.5d |  | Transire | Fernando da Gama | 8h |  |

| ID | WBS | Task | Duration | Start | Finish | Predecessors | Total slack | Free slack | Calendar | Resources | Work |
| --- | --- | --- | --- | --- | --- | --- | --- | --- | --- | --- | --- |
| 133 | 1.3.4 | **Validação dos workshops** | 1d | 2019-06-03 | 2019-06-03 |  | 0d |  | Transire |  | 8h |
| 134 | 1.3.4.1 | Reunião de alinhamento dos workshops e validação de possíveis gaps | 1d | 2019-06-03 | 2019-06-03 | 131FS+2d | 0d |  | Transire |  | 8h |
| 135 | 1.3.5 | **Workshop para equipe de usuários finais** | 9d | 2019-06-06 | 2019-06-18 |  | 0d |  | Transire |  | 176h |
| 136 | 1.3.5.1 | Realizar workshop de Processos de Dados Mestres / Navegação Básica (São Paulo) | 1d | 2019-06-06 | 2019-06-06 | 134FS+2d | 76.5d | 0d | Transire | Alberto Garcia | 8h |
| 137 | 1.3.5.2 | Realizar workshop de Processos de Dados Mestres / Navegação Básica (Manaus) | 1d | 2019-06-06 | 2019-06-06 | 134FS+2d | 0d |  | Transire | Fernando da Gama | 8h |
| 138 | 1.3.5.3 | Realizar workshop de Processos de Estoque (Manaus) | 2d | 2019-06-07 | 2019-06-10 | 137 | 0d |  | Transire | Fernando da Gama | 16h |
| 139 | 1.3.5.4 | Realizar workshop de Processos de PCP (Manaus) | 1d | 2019-06-11 | 2019-06-11 | 138 | 0d |  | Transire | Fernando da Gama | 8h |
| 140 | 1.3.5.5 | Realizar workshop de Processos de Produção (Manaus) | 2d | 2019-06-12 | 2019-06-13 | 139 | 0d |  | Transire | Fernando da Gama | 16h |
| 141 | 1.3.5.6 | Realizar workshop de Processos de Qualidade (Manaus) | 1d | 2019-06-14 | 2019-06-14 | 140 | 0d |  | Transire | Fernando da Gama | 8h |
| 142 | 1.3.5.7 | Realizar workshop de Processos de Contabilidade (São Paulo) | 2d | 2019-06-07 | 2019-06-10 | 136 | 76.5d | 0d | Transire | Alberto Garcia | 16h |
| 143 | 1.3.5.8 | Realizar workshop de Processos da área Fiscal (São Paulo) | 2d | 2019-06-11 | 2019-06-12 | 142 | 76.5d | 0d | Transire | Alberto Garcia | 16h |
| 144 | 1.3.5.9 | Realizar workshop de Processos de Custos (São Paulo) | 1d | 2019-06-13 | 2019-06-13 | 143 | 76.5d | 0d | Transire | Alberto Garcia | 8h |
| 145 | 1.3.5.10 | Realizar workshop de Processos de Ativo Imobilizado (São Paulo) | 1d | 2019-06-14 | 2019-06-14 | 144 | 76.5d | 0d | Transire | Alberto Garcia | 8h |
| 146 | 1.3.5.11 | Realizar workshop de Processos de Faturamento (São Paulo) | 1d | 2019-06-17 | 2019-06-17 | 145 | 76.5d | 0d | Transire | Alberto Garcia | 8h |
| 147 | 1.3.5.12 | Realizar workshop de Processos de Bancos (São Paulo) | 1d | 2019-06-18 | 2019-06-18 | 146 | 76.5d |  | Transire | Alberto Garcia | 8h |
| 148 | 1.3.5.13 | Realizar workshop de Processos de Compras e Importação (São Paulo) | 2d | 2019-06-07 | 2019-06-10 | 136 | 79.5d | 0d | Transire | Tadeu Rocha | 16h |
| 149 | 1.3.5.14 | Realizar workshop de Processos de Vendas (São Paulo) | 1d | 2019-06-11 | 2019-06-11 | 148 | 79.5d | 0d | Transire | Tadeu Rocha | 8h |
| 150 | 1.3.5.15 | Realizar workshop de Processos de Serviços e Assistência Técnica (São Paulo) | 1d | 2019-06-12 | 2019-06-12 | 149 | 79.5d | 0d | Transire | Tadeu Rocha | 8h |
| 151 | 1.3.5.16 | Realizar workshop de Processos de Administração do Sistema (São Paulo) | 1d | 2019-06-13 | 2019-06-13 | 150 | 79.5d |  | Transire | Tadeu Rocha | 8h |
| 152 | 1.3.5.17 | Realizar workshop de Processos de Gestão de Projetos (Manaus) | 1d | 2019-06-17 | 2019-06-17 | 141 | 0d |  | Transire | Fernando da Gama | 8h |
| 153 | 1.3.6 | **Testes Integrados** | 30d | 2019-06-18 | 2019-07-31 |  | 0d |  | Transire |  | 240h |
| 154 | 1.3.6.1 | Realizar testes integrados de Estoque (Manaus) | 2d | 2019-06-18 | 2019-06-19 | 152 | 0d |  | Transire | Fernando da Gama | 16h |
| 155 | 1.3.6.2 | Realizar testes integrados de PCP (Manaus) | 2d | 2019-06-21 | 2019-06-24 | 154 | 0d |  | Transire | Fernando da Gama | 16h |
| 156 | 1.3.6.3 | Realizar testes integrados de Produção (Manaus) | 2d | 2019-06-25 | 2019-06-26 | 155 | 0d |  | Transire | Fernando da Gama | 16h |
| 157 | 1.3.6.4 | Realizar testes integrados de Qualidade (Manaus) | 2d | 2019-06-27 | 2019-06-28 | 156 | 0d |  | Transire | Fernando da Gama | 16h |
| 158 | 1.3.6.5 | Realizar testes integrados de Contabilidade (São Paulo) | 2d | 2019-07-01 | 2019-07-02 | 157 | 0d |  | Transire | Alberto Garcia | 16h |
| 159 | 1.3.6.6 | Realizar testes integrados da área Fiscal (São Paulo) | 2d | 2019-07-03 | 2019-07-04 | 158 | 0d |  | Transire | Alberto Garcia | 16h |
| 160 | 1.3.6.7 | Realizar testes integrados de Custos (São Paulo) | 2d | 2019-07-05 | 2019-07-08 | 159 | 0d |  | Transire | Alberto Garcia | 16h |
| 161 | 1.3.6.8 | Realizar testes integrados de Ativo Imobilizado (São Paulo) | 2d | 2019-07-10 | 2019-07-11 | 160 | 0d |  | Transire | Alberto Garcia | 16h |
| 162 | 1.3.6.9 | Realizar testes integrados de Faturamento (São Paulo) | 2d | 2019-07-12 | 2019-07-15 | 161 | 0d |  | Transire | Alberto Garcia | 16h |
| 163 | 1.3.6.10 | Realizar testes integrados de Bancos (São Paulo) | 2d | 2019-07-16 | 2019-07-17 | 162 | 0d |  | Transire | Alberto Garcia | 16h |
| 164 | 1.3.6.11 | Realizar testes integrados de Compras e Importação (São Paulo) | 2d | 2019-07-18 | 2019-07-19 | 163 | 0d |  | Transire | Tadeu Rocha | 16h |
| 165 | 1.3.6.12 | Realizar testes integrados de Vendas (São Paulo) | 2d | 2019-07-22 | 2019-07-23 | 164 | 0d |  | Transire | Tadeu Rocha | 16h |
| 166 | 1.3.6.13 | Realizar testes integrados de Serviços e Assistência Técnica (São Paulo) | 2d | 2019-07-24 | 2019-07-25 | 165 | 0d |  | Transire | Tadeu Rocha | 16h |
| 167 | 1.3.6.14 | Realizar testes integrados de Gestão de Projetos (Manaus) | 2d | 2019-07-26 | 2019-07-29 | 166 | 0d |  | Transire | Fernando da Gama | 16h |
| 168 | 1.3.6.15 | Realizar testes integrados de Administração do Sistema (São Paulo) | 2d | 2019-07-30 | 2019-07-31 | 167 | 0d |  | Transire | Tadeu Rocha | 16h |
| 169 | 1.3.7 | Revisar resultados de teste | 2d | 2019-08-01 | 2019-08-02 | 168 | 0d |  | Transire | Alberto Garcia; Fernando da Gama; Tadeu Rocha | 48h |
| 170 | 1.3.8 | Copiar sistema de teste para o sistema de produção | 1d | 2019-08-05 | 2019-08-05 | 169 | 0d |  | Transire | Infra Seidor | 8h |
| 171 | 1.3.9 | Ajustar configuração no sistema de produção (se necessário) | 1d | 2019-08-06 | 2019-08-06 | 170 | 0d |  | Transire | Alberto Garcia; Fernando da Gama; Tadeu Rocha | 24h |

| ID | WBS | Task | Type | Duration | Start | Finish | Predecessors | Total slack | Calendar | Resources | Work |
| --- | --- | --- | --- | --- | --- | --- | --- | --- | --- | --- | --- |
| 172 | 1.3.10 | **Revisar fase de projeto** |  | 0d | 2019-08-06 | 2019-08-06 |  | 0d | Transire |  |  |
| 173 | 1.3.10.1 | Revisar fase de projeto | milestone | 0d | 2019-08-06 | 2019-08-06 | 171 | 0d | Transire | Leonardo Lisboa |  |
| 174 | 1.3.10.2 | Assinar fase de projeto com cliente | milestone | 0d | 2019-08-06 | 2019-08-06 | 173 | 0d | Transire |  |  |
| 175 | 1.4 | **Fase 4 - Preparação final** |  | 11.5d | 2019-08-07 | 2019-08-22 |  | 0d | Transire |  | 276h |
| 176 | 1.4.1 | **Plano de cutover** |  | 11.5d | 2019-08-07 | 2019-08-22 |  | 0d | Transire |  | 276h |
| 177 | 1.4.1.1 | Definição dos planos de corte |  | 2d | 2019-08-07 | 2019-08-08 | 174 | 0d | Transire | Alberto Garcia; Fernando da Gama; Tadeu Rocha | 48h |
| 178 | 1.4.1.2 | Levantamento de saldos iniciais |  | 4d | 2019-08-09 | 2019-08-14 | 177 | 0d | Transire | Alberto Garcia; Fernando da Gama; Tadeu Rocha | 96h |
| 179 | 1.4.1.3 | Carga de saldos |  | 5d | 2019-08-15 | 2019-08-21 | 178 | 0d | Transire | Alberto Garcia; Fernando da Gama; Tadeu Rocha | 120h |
| 180 | 1.4.1.4 | Revisão dos acessos dos usuários |  | 0.5d | 2019-08-22 | 2019-08-22 | 179 | 0d | Transire | Alberto Garcia; Fernando da Gama; Tadeu Rocha | 12h |
| 181 | 1.4.2 | **Revisar fase de projeto** |  | 0d | 2019-08-22 | 2019-08-22 |  | 0d | Transire |  |  |
| 182 | 1.4.2.1 | Assinar autorização para go-live | milestone | 0d | 2019-08-22 | 2019-08-22 | 180 | 0d | Transire | Leonardo Lisboa |  |
| 183 | 1.5 | **Fase 5 - Início de operação e suporte** |  | 32d | 2019-08-22 | 2019-10-07 |  | 0d | Transire |  | 304h |
| 184 | 1.5.1 | **Suporte de produção** |  | 31d | 2019-08-22 | 2019-10-04 |  | 0d | Transire |  | 296h |
| 185 | 1.5.1.1 | Configuração inicial da numeração de documentos |  | 0.5d | 2019-08-22 | 2019-08-22 | 182 | 0d | Transire | Alberto Garcia; Fernando da Gama; Tadeu Rocha | 12h |
| 186 | 1.5.1.2 | Liberar usuários para acesso em base de produção |  | 0.5d | 2019-08-23 | 2019-08-23 | 185 | 0d | Transire | Alberto Garcia; Fernando da Gama; Tadeu Rocha | 12h |
| 187 | 1.5.1.3 | Acompanhamento de operação em produção |  | 10d | 2019-08-23 | 2019-09-06 | 186 | 0d | Transire | Alberto Garcia; Fernando da Gama; Tadeu Rocha | 240h |
| 188 | 1.5.1.4 | Transferir suporte e administração para o suporte do parceiro |  | 1d | 2019-09-06 | 2019-09-09 | 187 | 0d | Transire | Leonardo Lisboa | 8h |
| 189 | 1.5.1.5 | Acompanhamento de primeiro fechamento contábil |  | 3d | 2019-10-01 | 2019-10-04 | 188FS+16d | 0d | Transire | Alberto Garcia | 24h |
| 190 | 1.5.2 | **Encerramento do projeto** |  | 1d | 2019-10-04 | 2019-10-07 |  | 0d | Transire |  | 8h |
| 191 | 1.5.2.1 | Reunião de encerramento do projeto |  | 1d | 2019-10-04 | 2019-10-07 | 189 | 0d | Transire | Leonardo Lisboa | 8h |
